# Barber 920 - Fase 3 (O a W), terminada

Schedule from MS Project XML, 2026-11-08 to 2026-11-11, status date 2026-11-13, 2 hours a day, costs in $, A marks actual dates.
Equipo Barber 920 UACJ

## Calendars

- Equipo 18:30 a 20:30 lunes a viernes: Mon-Fri 18:30-20:30; Sat-Sun off. Exceptions (off unless hours are given): 2026-11-08 18:30-20:30 (Avance de la Fase 3).

## Resources

| Resource | Rate |
| --- | --- |
| Luis Uziel Cruz Martínez | 80 |
| Alison Aguirre Hernández | 80 |
| Carlos Guerrero Morales | 80 |
| Dante Uriel Ramírez Márquez | 80 |
| Jesús Alberto González Martínez | 80 |

## Schedule

| ID | WBS | Task | Duration | Start | Finish | Predecessors | Complete | Baseline start | Baseline finish | Baseline duration | Resources | Work | Actual work | Cost | Actual cost |
| --- | --- | --- | --- | --- | --- | --- | --- | --- | --- | --- | --- | --- | --- | --- | --- |
| 1 | 2.2 | O Completar acuerdos y datos | 1d | 2026-11-11 A | 2026-11-11 A |  | 100% | 2026-10-05 | 2026-10-05 | 1d | Alison Aguirre Hernández | 2h | 2h | 1.6 | 1.6 |
| 2 | 2.3 | P Completar catálogo y sucursales | 2d | 2026-11-08 A | 2026-11-09 A | 1 | 100% | 2026-10-06 | 2026-10-07 | 2d | Alison Aguirre Hernández | 4h | 4h | 3.2 | 3.2 |
| 3 | 2.4 | Q Definir personal y reglas | 2d | 2026-11-08 A | 2026-11-09 A | 1 | 100% | 2026-10-06 | 2026-10-08 | 3d | Dante Uriel Ramírez Márquez [150%] | 6h | 6h | 4.8 | 4.8 |
| 4 | 5.3 | R Ajustar interfaz con datos confirmados | 1d | 2026-11-08 A | 2026-11-08 A | 2 | 100% | 2026-10-08 | 2026-10-09 | 2d | Carlos Guerrero Morales [200%] | 4h | 4h | 3.2 | 3.2 |
| 5 | 5.4 | S Adaptar API y disponibilidad | 1d | 2026-11-08 A | 2026-11-08 A | 3 | 100% | 2026-10-09 | 2026-10-14 | 4d | Jesús Alberto González Martínez [400%] | 8h | 8h | 6.4 | 6.4 |
| 6 | 6.1 | T Ejecutar pruebas integrales | 1d | 2026-11-08 A | 2026-11-08 A | 4, 5 | 100% | 2026-10-15 | 2026-10-16 | 2d | Jesús Alberto González Martínez [200%] | 4h | 4h | 3.2 | 3.2 |
| 7 | 6.2 | U Revisar versión con cliente y equipo | 1d | 2026-11-11 A | 2026-11-11 A | 6 | 100% | 2026-10-19 | 2026-10-19 | 1d | Carlos Guerrero Morales | 2h | 2h | 1.6 | 1.6 |
| 8 | 6.3 | V Corregir observaciones | 1d | 2026-11-11 A | 2026-11-11 A | 7 | 100% | 2026-10-20 | 2026-10-21 | 2d | Carlos Guerrero Morales [200%] | 4h | 4h | 3.2 | 3.2 |
| 9 | 7.2 | W Preparar evidencia de la iteración | 1d | 2026-11-08 A | 2026-11-08 A | 6 | 100% | 2026-10-19 | 2026-10-20 | 2d | Luis Uziel Cruz Martínez [200%] | 4h | 4h | 3.2 | 3.2 |

Notes:
- 1: Terminada el 11 de noviembre de 2026: el cliente firmó la entrega del proyecto. Plan del 4 de octubre: TE de 1 jornada de 2 horas. Responsable en el plan: Alison Aguirre Hernández. El trabajo se valúa con las horas del plan y la tarifa académica de $80 MXN por hora; no es un gasto real. La línea base guarda las fechas del plan.
- 2: Terminada el 9 de noviembre de 2026: precios de la entrevista y cambio de precios desde el panel. El cliente la aceptó con la firma del 11 de noviembre. Plan del 4 de octubre: TE de 2 jornadas de 2 horas. Responsable en el plan: Alison Aguirre Hernández. El trabajo se valúa con las horas del plan y la tarifa académica de $80 MXN por hora; no es un gasto real. La línea base guarda las fechas del plan.
- 3: Terminada el 9 de noviembre de 2026: reglas por barbero y alta de barberos con su sucursal y descanso desde el panel. El cliente la aceptó con la firma del 11 de noviembre. Plan del 4 de octubre: TE de 3 jornadas de 2 horas. Responsable en el plan: Dante Uriel Ramírez Márquez. El trabajo se valúa con las horas del plan y la tarifa académica de $80 MXN por hora; no es un gasto real. La línea base guarda las fechas del plan.
- 4: Terminada el 8 de noviembre de 2026: agenda por barbero en la página. Plan del 4 de octubre: TE de 2 jornadas de 2 horas. Responsable en el plan: Carlos Guerrero Morales. El trabajo se valúa con las horas del plan y la tarifa académica de $80 MXN por hora; no es un gasto real. La línea base guarda las fechas del plan.
- 5: Terminada el 8 de noviembre de 2026: API con disponibilidad por barbero. Plan del 4 de octubre: TE de 4 jornadas de 2 horas. Responsable en el plan: Jesús Alberto González Martínez. El trabajo se valúa con las horas del plan y la tarifa académica de $80 MXN por hora; no es un gasto real. La línea base guarda las fechas del plan.
- 6: Terminada el 8 de noviembre de 2026: pruebas automáticas y recorrido con capturas. Pasan 5 de 5. Plan del 4 de octubre: TE de 2 jornadas de 2 horas. Responsable en el plan: Jesús Alberto González Martínez. El trabajo se valúa con las horas del plan y la tarifa académica de $80 MXN por hora; no es un gasto real. La línea base guarda las fechas del plan.
- 7: Terminada el 11 de noviembre de 2026: el cliente revisó la versión y firmó la entrega. Plan del 4 de octubre: TE de 1 jornada de 2 horas. Responsable en el plan: Carlos Guerrero Morales. El trabajo se valúa con las horas del plan y la tarifa académica de $80 MXN por hora; no es un gasto real. La línea base guarda las fechas del plan.
- 8: Terminada el 11 de noviembre de 2026: se cerró con la firma del cliente. Plan del 4 de octubre: TE de 2 jornadas de 2 horas. Responsable en el plan: Carlos Guerrero Morales. El trabajo se valúa con las horas del plan y la tarifa académica de $80 MXN por hora; no es un gasto real. La línea base guarda las fechas del plan.
- 9: Terminada: capturas del 8 de noviembre de 2026 y video de entrega. Plan del 4 de octubre: TE de 2 jornadas de 2 horas. Responsable en el plan: Luis Uziel Cruz Martínez. El trabajo se valúa con las horas del plan y la tarifa académica de $80 MXN por hora; no es un gasto real. La línea base guarda las fechas del plan.
